# roadmap

Schedule from MS Project, 2007-06-25 to 2007-10-05.
Weber Masterstudies & Human Ressources Ltd.

## Calendars

- Standard: Mon-Fri 08:00-12:00, 13:00-17:00; Sat-Sun off.

## Schedule

| ID | WBS | Task | Duration | Start | Finish | Predecessors | Total slack | Constraint |
| --- | --- | --- | --- | --- | --- | --- | --- | --- |
| 1 | 1 | **Masterstudy** | 75d | 2007-06-25 | 2007-10-05 |  | 0d |  |
| 2 | 1.1 | **Vorarbeiten** | 25d | 2007-06-25 | 2007-07-27 |  | 0d |  |
| 3 | 1.1.1 | Organisieren der Literatur | 5d | 2007-06-25 | 2007-06-29 |  | 0d |  |
| 4 | 1.1.2 | Literaturstudium | 10d | 2007-07-02 | 2007-07-13 | 3 | 0d | as late as possible |
| 5 | 1.1.3 | Erarbeiten Fragenkatalog | 10d | 2007-07-16 | 2007-07-27 | 4 | 0d | as late as possible |
| 6 | 1.1.4 | Setup Survey Applikation | 2d | 2007-07-16 | 2007-07-17 | 4 | 8d |  |
| 7 | 1.1.5 | Erarbeiten der Einladungsschreiben | 2d | 2007-07-11 | 2007-07-12 |  | 6d | start no earlier than 2007-07-11 |
| 8 | 1.2 | **Umfrage** | 25d | 2007-07-30 | 2007-08-31 | 2 | 0d |  |
| 9 | 1.2.1 | Start der Umfrage | 20d | 2007-07-30 | 2007-08-24 |  | 0d |  |
| 10 | 1.2.2 | Auswertung der Umfrage | 5d | 2007-08-27 | 2007-08-31 | 9 | 0d |  |
| 11 | 1.3 | **Umsetzung** | 25d | 2007-09-03 | 2007-10-05 | 8 | 0d |  |
| 12 | 1.3.1 | Kapitel 1 | 5d | 2007-09-03 | 2007-09-07 |  | 0d |  |
| 13 | 1.3.2 | Kapitel 2 | 5d | 2007-09-10 | 2007-09-14 | 12 | 0d |  |
| 14 | 1.3.3 | Kapitel 3 | 5d | 2007-09-17 | 2007-09-21 | 13 | 0d |  |
| 15 | 1.3.4 | Kapitel 4 | 5d | 2007-09-24 | 2007-09-28 | 14 | 0d |  |
| 16 | 1.3.5 | Kapitel 5 | 5d | 2007-10-01 | 2007-10-05 | 15 | 0d |  |
